# Modelo de Projetos

Schedule from MS Project, 2014-01-10 to 2014-01-16.

## Calendars

- Standard: Mon-Fri 08:00-12:00, 13:00-17:00; Sat-Sun off.

## Resources

| Resource |
| --- |
| Adolfo |
| Jesuíno |
| Wesley Ferreira |
| Moisés |
| Wesley Oliveira |
| Ariel |

## Schedule

| ID | WBS | Task | Duration | Start | Finish | Predecessors | Total slack | Free slack | Resources | Work |
| --- | --- | --- | --- | --- | --- | --- | --- | --- | --- | --- |
| 1 | 1 | **ManáWeb** | 2.44d | 2014-01-10 08:00 | 2014-01-14 11:30 |  | -2d | 0d |  | 47h |
| 2 | 1.1 | Comercial | 4h | 2014-01-10 08:00 | 2014-01-10 12:00 |  | -2d | 0d | Adolfo | 4h |
| 3 | 1.2 | Analise de Requisito | 1h | 2014-01-10 13:00 | 2014-01-10 14:00 | 2 | -2d | 0d | Jesuíno | 1h |
| 4 | 1.3 | Prototipo | 1h | 2014-01-10 14:00 | 2014-01-10 15:00 | 3 | -2d | 0d | Jesuíno | 1h |
| 5 | 1.4 | R. de Aceite | 5h | 2014-01-10 15:00 | 2014-01-13 11:00 | 4 | -2d | 0d | Jesuíno | 5h |
| 6 | 1.5 | Analise Funcional | 10min | 2014-01-13 11:00 | 2014-01-13 11:10 | 5 | -2d | 0d | Wesley Ferreira; Moisés; Wesley Oliveira | 0.5h |
| 7 | 1.6 | Analise Tecnica | 50min | 2014-01-13 11:10 | 2014-01-13 12:00 | 6 | -2d | 0d | Wesley Ferreira; Moisés; Wesley Oliveira | 2.5h |
| 8 | 1.7 | Leitura de Analise Requisito | 10min | 2014-01-10 14:00 | 2014-01-10 14:10 | 3 | -0.21d | 0d | Moisés; Wesley Ferreira; Wesley Oliveira | 0.5h |
| 9 | 1.8 | Leitura de Analise Funcional | 10min | 2014-01-13 11:10 | 2014-01-13 11:20 | 6 | -0.98d | 0d | Moisés; Wesley Ferreira; Wesley Oliveira | 0.5h |
| 10 | 1.9 | Leitura de Analise Tecnica | 10min | 2014-01-13 13:00 | 2014-01-13 13:10 | 7 | -1.08d | 0d | Moisés; Wesley Ferreira; Wesley Oliveira | 0.5h |
| 11 | 1.10 | Criação de Layout | 3h | 2014-01-10 15:00 | 2014-01-13 09:00 | 4 | -1.75d | 0d | Moisés | 3h |
| 12 | 1.11 | Desenv. Back | 3h | 2014-01-13 13:00 | 2014-01-13 16:00 | 7 | -2d | 0d | Wesley Ferreira | 3h |
| 13 | 1.12 | Desenv. Front | 4h | 2014-01-13 09:00 | 2014-01-13 14:00 | 11 | -1.75d | 0d | Wesley Oliveira | 4h |
| 14 | 1.13 | Preencher conteudos | 30min | 2014-01-13 16:00 | 2014-01-13 16:30 | 12, 13 | -2d | 0d | Moisés; Wesley Ferreira; Wesley Oliveira | 1.5h |
| 15 | 1.14 | Teste Geral | 4h | 2014-01-13 16:30 | 2014-01-14 11:30 | 14 | -2d | 0d | Adolfo; Jesuíno; Moisés; Wesley Ferreira; Wesley Oliveira | 20h |
| 16 | 2 | **GOOGLE** | 2.44d | 2014-01-14 11:30 | 2014-01-16 16:00 | 1 | 0d |  |  | 27h |
| 17 | 2.1 | Comercial | 4h | 2014-01-14 11:30 | 2014-01-14 16:30 |  | 0d |  | Adolfo | 4h |
| 18 | 2.2 | Analise de Requisito | 1h | 2014-01-14 16:30 | 2014-01-15 08:30 | 17 | 0d |  | Jesuíno | 1h |
| 19 | 2.3 | Prototipo | 1h | 2014-01-15 08:30 | 2014-01-15 09:30 | 18 | 0d |  | Wesley Ferreira | 1h |
| 20 | 2.4 | R. de Aceite | 5h | 2014-01-15 09:30 | 2014-01-15 15:30 | 19 | 0d |  | Wesley Ferreira | 5h |
| 21 | 2.5 | Analise Funcional | 10min | 2014-01-15 15:30 | 2014-01-15 15:40 | 20 | 0d |  | Wesley Ferreira | 0.17h |
| 22 | 2.6 | Analise Tecnica | 50min | 2014-01-15 15:40 | 2014-01-15 16:30 | 21 | 0d |  | Wesley Ferreira | 0.83h |
| 23 | 2.7 | Leitura de Analise Requisito | 10min | 2014-01-15 08:30 | 2014-01-15 08:40 | 18 | 1.79d |  | Wesley Ferreira | 0.17h |
| 24 | 2.8 | Leitura de Analise Funcional | 10min | 2014-01-15 15:40 | 2014-01-15 15:50 | 21 | 1.02d |  | Wesley Ferreira | 0.17h |
| 25 | 2.9 | Leitura de Analise Tecnica | 10min | 2014-01-15 16:30 | 2014-01-15 16:40 | 22 | 0.92d |  | Wesley Ferreira | 0.17h |
| 26 | 2.10 | Criação de Layout | 3h | 2014-01-15 09:30 | 2014-01-15 13:30 | 19 | 0.25d | 0d | Wesley Ferreira | 3h |
| 27 | 2.11 | Desenv. Back | 3h | 2014-01-15 16:30 | 2014-01-16 10:30 | 22 | 0d |  | Wesley Ferreira | 3h |
| 28 | 2.12 | Desenv. Front | 4h | 2014-01-15 13:30 | 2014-01-16 08:30 | 26 | 0.25d |  | Wesley Oliveira | 4h |
| 29 | 2.13 | Preencher conteudos | 30min | 2014-01-16 10:30 | 2014-01-16 11:00 | 27, 28 | 0d |  | Wesley Ferreira | 0.5h |
| 30 | 2.14 | Teste Geral | 4h | 2014-01-16 11:00 | 2014-01-16 16:00 | 29 | 0d |  | Wesley Ferreira | 4h |

| ID | WBS | Task | Duration | Start | Finish | Predecessors | Total slack | Free slack | Resources | Work |
| --- | --- | --- | --- | --- | --- | --- | --- | --- | --- | --- |
| 31 | 3 | **Samsung** | 2.44d | 2014-01-14 11:30 | 2014-01-16 16:00 | 1 | 0d |  |  | 27h |
| 32 | 3.1 | Comercial | 4h | 2014-01-14 11:30 | 2014-01-14 16:30 |  | 0d |  | Adolfo | 4h |
| 33 | 3.2 | Analise de Requisito | 1h | 2014-01-14 16:30 | 2014-01-15 08:30 | 32 | 0d |  | Jesuíno | 1h |
| 34 | 3.3 | Prototipo | 1h | 2014-01-15 08:30 | 2014-01-15 09:30 | 33 | 0d |  | Wesley Oliveira | 1h |
| 35 | 3.4 | R. de Aceite | 5h | 2014-01-15 09:30 | 2014-01-15 15:30 | 34 | 0d |  | Wesley Oliveira | 5h |
| 36 | 3.5 | Analise Funcional | 10min | 2014-01-15 15:30 | 2014-01-15 15:40 | 35 | 0d |  | Wesley Oliveira | 0.17h |
| 37 | 3.6 | Analise Tecnica | 50min | 2014-01-15 15:40 | 2014-01-15 16:30 | 36 | 0d |  | Wesley Oliveira | 0.83h |
| 38 | 3.7 | Leitura de Analise Requisito | 10min | 2014-01-15 08:30 | 2014-01-15 08:40 | 33 | 1.79d |  | Wesley Oliveira | 0.17h |
| 39 | 3.8 | Leitura de Analise Funcional | 10min | 2014-01-15 15:40 | 2014-01-15 15:50 | 36 | 1.02d |  | Wesley Oliveira | 0.17h |
| 40 | 3.9 | Leitura de Analise Tecnica | 10min | 2014-01-15 16:30 | 2014-01-15 16:40 | 37 | 0.92d |  | Wesley Oliveira | 0.17h |
| 41 | 3.10 | Criação de Layout | 3h | 2014-01-15 09:30 | 2014-01-15 13:30 | 34 | 0.25d | 0d | Wesley Oliveira | 3h |
| 42 | 3.11 | Desenv. Back | 3h | 2014-01-15 16:30 | 2014-01-16 10:30 | 37 | 0d |  | Wesley Oliveira | 3h |
| 43 | 3.12 | Desenv. Front | 4h | 2014-01-15 13:30 | 2014-01-16 08:30 | 41 | 0.25d |  | Wesley Oliveira | 4h |
| 44 | 3.13 | Preencher conteudos | 30min | 2014-01-16 10:30 | 2014-01-16 11:00 | 42, 43 | 0d |  | Wesley Oliveira | 0.5h |
| 45 | 3.14 | Teste Geral | 4h | 2014-01-16 11:00 | 2014-01-16 16:00 | 44 | 0d |  | Wesley Oliveira | 4h |
| 46 | 4 | **Petrobras** | 4.44d | 2014-01-10 11:30 | 2014-01-16 16:00 | 1 | 0d |  |  | 27h |
| 47 | 4.1 | Comercial | 4h | 2014-01-14 11:30 | 2014-01-14 16:30 |  | 0d |  | Adolfo | 4h |
| 48 | 4.2 | Analise de Requisito | 1h | 2014-01-14 16:30 | 2014-01-15 08:30 | 47 | 0d |  | Jesuíno | 1h |
| 49 | 4.3 | Prototipo | 1h | 2014-01-15 08:30 | 2014-01-15 09:30 | 48 | 0d |  | Moisés | 1h |
| 50 | 4.4 | R. de Aceite | 5h | 2014-01-15 09:30 | 2014-01-15 15:30 | 49 | 0d |  | Moisés | 5h |
| 51 | 4.5 | Analise Funcional | 10min | 2014-01-15 15:30 | 2014-01-15 15:40 | 50 | 0d |  | Moisés | 0.17h |
| 52 | 4.6 | Analise Tecnica | 50min | 2014-01-15 15:40 | 2014-01-15 16:30 | 51 | 0d |  | Moisés | 0.83h |
| 53 | 4.7 | Leitura de Analise Requisito | 10min | 2014-01-15 08:30 | 2014-01-15 08:40 | 48 | 1.79d |  | Moisés | 0.17h |
| 54 | 4.8 | Leitura de Analise Funcional | 10min | 2014-01-15 15:40 | 2014-01-15 15:50 | 51 | 1.02d |  | Moisés | 0.17h |
| 55 | 4.9 | Leitura de Analise Tecnica | 10min | 2014-01-15 16:30 | 2014-01-15 16:40 | 52 | 0.92d |  | Moisés | 0.17h |
| 56 | 4.10 | Criação de Layout | 3h | 2014-01-15 09:30 | 2014-01-15 13:30 | 49 | 0.25d | 0d | Moisés | 3h |
| 57 | 4.11 | Desenv. Back | 3h | 2014-01-15 16:30 | 2014-01-16 10:30 | 52 | 0d |  | Moisés | 3h |
| 58 | 4.12 | Desenv. Front | 4h | 2014-01-15 13:30 | 2014-01-16 08:30 | 56 | 0.25d |  | Moisés | 4h |
| 59 | 4.13 | Preencher conteudos | 30min | 2014-01-16 10:30 | 2014-01-16 11:00 | 57, 58 | 0d |  | Moisés | 0.5h |
| 60 | 4.14 | Teste Geral | 4h | 2014-01-16 11:00 | 2014-01-16 16:00 | 59 | 0d |  | Moisés | 4h |

| ID | WBS | Task | Duration | Start | Finish | Predecessors | Total slack | Free slack | Resources | Work |
| --- | --- | --- | --- | --- | --- | --- | --- | --- | --- | --- |
| 62 | 5 | **Rovan** | 4d | 2014-01-10 08:00 | 2014-01-15 17:00 |  | 0.88d |  |  | 27h |
| 63 | 5.1 | Comercial | 4h | 2014-01-10 08:00 | 2014-01-10 12:00 |  | 2.44d | 0d | Adolfo | 4h |
| 64 | 5.2 | Analise de Requisito | 1h | 2014-01-10 13:00 | 2014-01-10 14:00 | 63 | 2.44d | 0d | Jesuíno | 1h |
| 65 | 5.3 | Prototipo | 1h | 2014-01-10 14:00 | 2014-01-10 15:00 | 64 | 2.44d | 0d | Ariel | 1h |
| 66 | 5.4 | R. de Aceite | 5h | 2014-01-10 15:00 | 2014-01-13 11:00 | 65 | 2.44d | 0d | Ariel | 5h |
| 67 | 5.5 | Analise Funcional | 10min | 2014-01-13 11:00 | 2014-01-13 11:10 | 66 | 2.44d | 0d | Ariel | 0.17h |
| 68 | 5.6 | Analise Tecnica | 50min | 2014-01-13 11:10 | 2014-01-13 12:00 | 67 | 2.44d | 0d | Ariel | 0.83h |
| 69 | 5.7 | Leitura de Analise Requisito | 10min | 2014-01-10 14:00 | 2014-01-10 14:10 | 64 | 4.23d |  | Ariel | 0.17h |
| 70 | 5.8 | Leitura de Analise Funcional | 10min | 2014-01-13 11:10 | 2014-01-13 11:20 | 67 | 3.46d |  | Ariel | 0.17h |
| 71 | 5.9 | Leitura de Analise Tecnica | 10min | 2014-01-13 13:00 | 2014-01-13 13:10 | 68 | 3.35d |  | Ariel | 0.17h |
| 72 | 5.10 | Criação de Layout | 3h | 2014-01-10 15:00 | 2014-01-13 09:00 | 65 | 2.69d | 0d | Ariel | 3h |
| 73 | 5.11 | Desenv. Back | 3h | 2014-01-13 13:00 | 2014-01-13 16:00 | 68 | 2.44d | 0d | Ariel | 3h |
| 74 | 5.12 | Desenv. Front | 4h | 2014-01-13 09:00 | 2014-01-13 14:00 | 72 | 2.69d | 0.25d | Ariel | 4h |
| 75 | 5.13 | Preencher conteudos | 30min | 2014-01-13 16:00 | 2014-01-13 16:30 | 73, 74 | 2.44d | 0d | Ariel | 0.5h |
| 76 | 5.14 | Teste Geral | 4h | 2014-01-13 16:30 | 2014-01-14 11:30 | 75 | 2.44d |  | Ariel | 4h |
